# CND 16 semanas - Cronograma y Costeo v3

Schedule from ProjectLibre, 2026-08-20 to 2026-12-10.

## Calendars

- Gonzales, Jonathan[Imported]: Mon-Fri 08:00-12:00, 13:00-17:00; Sat-Sun off.

## Resources

| Resource | Group | Notes |
| --- | --- | --- |
| No Asignado |  |  |
| Torres Espinoza, Omar Marlon | Director del proyecto | Tarifa referencial S/ 54.50/h (costo empleador). El costo laboral se imputa como costo fijo de cada tarea. |
| Arteaga Suarez, Herik Aymar | Analista de requerimientos y procesos | Tarifa referencial S/ 31.00/h (costo empleador). El costo laboral se imputa como costo fijo de cada tarea. |
| Cueva Macedo, Junior Alberto | Administrador del ERP / desarrollador | Tarifa referencial S/ 35.00/h (costo empleador). El costo laboral se imputa como costo fijo de cada tarea. |
| Mondalgo Diaz, Jose Alexander | Desarrollador (BD e interfaces) | Tarifa referencial S/ 27.00/h (costo empleador). El costo laboral se imputa como costo fijo de cada tarea. |
| Mosquera Garcia, Anthony Eduardo | QA y documentación | Tarifa referencial S/ 31.00/h (costo empleador). El costo laboral se imputa como costo fijo de cada tarea. |
| Gonzales, Jonathan | Patrocinador | Tarifa referencial S/ 0.00/h (costo empleador). El costo laboral se imputa como costo fijo de cada tarea. |

## Schedule

| ID | WBS | Task | Type | Duration | Start | Finish | Predecessors | Complete | Baseline start | Baseline finish | Resources | Text1 |
| --- | --- | --- | --- | --- | --- | --- | --- | --- | --- | --- | --- | --- |
| 1 | 0 | **CND 16 semanas** |  | 81d | 2026-08-20 | 2026-12-10 |  | 83% | 2026-08-20 | 2026-12-10 |  |  |
| 2 | 1 | **Gestión del Proyecto** |  | 76d | 2026-08-20 | 2026-12-03 |  | 87% | 2026-08-20 | 2026-12-03 |  | S/ 14,330.00 |
| 3 | 1.1 | **Inicio** |  | 8d | 2026-08-20 | 2026-09-01 |  | 100% | 2026-08-20 | 2026-09-01 |  | S/ 3,230.00 |
| 4 | 1.1.1 | Entrevistas con el Patrocinador |  | 3d | 2026-08-20 | 2026-08-24 |  | 100% | 2026-08-20 | 2026-08-24 | Torres Espinoza, Omar Marlon [50%]; Arteaga Suarez, Herik Aymar [50%]; Gonzales, Jonathan [25%] | S/ 1,058.00 |
| 5 | 1.1.2 | Acta de Constitución |  | 5d | 2026-08-25 | 2026-08-31 | 4 | 100% | 2026-08-25 | 2026-08-31 | Torres Espinoza, Omar Marlon [75%] | S/ 1,660.00 |
| 6 | 1.1.3 | Registro de Interesados |  | 4d | 2026-08-25 | 2026-08-28 | 4 | 100% | 2026-08-25 | 2026-08-28 | Arteaga Suarez, Herik Aymar [50%] | S/ 512.00 |
| 7 | 1.1.4 | Acta firmada | milestone | 0d | 2026-09-01 | 2026-09-01 | 5, 6 | 100% | 2026-09-01 | 2026-09-01 |  | S/ 0.00 |
| 8 | 1.2 | **Planificación** |  | 13d | 2026-09-01 | 2026-09-17 |  | 100% | 2026-09-01 | 2026-09-17 |  | S/ 2,594.00 |
| 9 | 1.2.1 | Lista de Requerimientos |  | 3d | 2026-09-01 | 2026-09-03 | 7 | 100% | 2026-09-01 | 2026-09-03 | Arteaga Suarez, Herik Aymar [75%] | S/ 582.00 |
| 10 | 1.2.2 | Plan de Gestión del Alcance |  | 2d | 2026-09-04 | 2026-09-07 | 9 | 100% | 2026-09-04 | 2026-09-07 | Torres Espinoza, Omar Marlon [50%] | S/ 440.00 |
| 11 | 1.2.3 | EDT / WBS del Proyecto |  | 2d | 2026-09-08 | 2026-09-09 | 10 | 100% | 2026-09-08 | 2026-09-09 | Arteaga Suarez, Herik Aymar [50%] | S/ 252.00 |
| 12 | 1.2.4 | Cronograma del Proyecto |  | 2d | 2026-09-10 | 2026-09-11 | 11 | 100% | 2026-09-10 | 2026-09-11 | Torres Espinoza, Omar Marlon [50%] | S/ 440.00 |
| 13 | 1.2.5 | Costes y Presupuesto |  | 2d | 2026-09-14 | 2026-09-15 | 12 | 100% | 2026-09-14 | 2026-09-15 | Torres Espinoza, Omar Marlon [50%] | S/ 440.00 |
| 14 | 1.2.6 | Plan de Riesgos y Comunicaciones |  | 2d | 2026-09-16 | 2026-09-17 | 13 | 100% | 2026-09-16 | 2026-09-17 | Torres Espinoza, Omar Marlon [50%] | S/ 440.00 |
| 15 | 1.3 | **Ejecución** |  | 34d | 2026-09-18 | 2026-11-04 |  | 100% | 2026-09-18 | 2026-11-04 |  | S/ 4,410.00 |
| 16 | 1.3.1 | Reuniones de Coordinación Semanales |  | 10d | 2026-09-18 | 2026-10-01 | 14 | 100% | 2026-09-18 | 2026-10-01 | Torres Espinoza, Omar Marlon [25%] | S/ 1,120.00 |
| 17 | 1.3.2 | Asignación y Supervisión de Tareas |  | 14d | 2026-10-02 | 2026-10-21 | 16 | 100% | 2026-10-02 | 2026-10-21 | Torres Espinoza, Omar Marlon [25%] | S/ 1,540.00 |
| 18 | 1.3.3 | Desarrollo de Entregables de Gestión |  | 10d | 2026-10-22 | 2026-11-04 | 17 | 100% | 2026-10-22 | 2026-11-04 | Torres Espinoza, Omar Marlon [25%]; Arteaga Suarez, Herik Aymar [25%] | S/ 1,750.00 |
| 19 | 1.4 | **Monitoreo y Control** |  | 15d | 2026-11-05 | 2026-11-25 |  | 73% | 2026-11-05 | 2026-11-25 |  | S/ 2,709.00 |
| 20 | 1.4.1 | Control de Avance y Cronograma |  | 8d | 2026-11-05 | 2026-11-16 | 18 | 100% | 2026-11-05 | 2026-11-16 | Torres Espinoza, Omar Marlon [25%] | S/ 880.00 |
| 21 | 1.4.2 | Control de Solicitudes de Cambio |  | 3d | 2026-11-17 | 2026-11-19 | 20 | 100% | 2026-11-17 | 2026-11-19 | Torres Espinoza, Omar Marlon [50%]; Cueva Macedo, Junior Alberto [25%] | S/ 873.00 |
| 22 | 1.4.3 | Validación y Aceptación de Entregables |  | 4d | 2026-11-20 | 2026-11-25 | 21 | 25% | 2026-11-20 | 2026-11-25 | Mosquera Garcia, Anthony Eduardo [50%]; Torres Espinoza, Omar Marlon [25%] | S/ 956.00 |
| 23 | 1.5 | **Cierre** |  | 6d | 2026-11-26 | 2026-12-03 |  |  | 2026-11-26 | 2026-12-03 |  | S/ 1,387.00 |
| 24 | 1.5.1 | Informe Final del Proyecto |  | 2d | 2026-11-26 | 2026-11-27 | 22 |  | 2026-11-26 | 2026-11-27 | Arteaga Suarez, Herik Aymar [50%]; Torres Espinoza, Omar Marlon [25%] | S/ 497.00 |
| 25 | 1.5.2 | Documentación de Lecciones Aprendidas |  | 2d | 2026-11-30 | 2026-12-01 | 24 |  | 2026-11-30 | 2026-12-01 | Torres Espinoza, Omar Marlon [50%] | S/ 440.00 |
| 26 | 1.5.3 | Cierre Administrativo y Firma |  | 2d | 2026-12-02 | 2026-12-03 | 25 |  | 2026-12-02 | 2026-12-03 | Torres Espinoza, Omar Marlon [50%] | S/ 450.00 |

| ID | WBS | Task | Type | Duration | Start | Finish | Predecessors | Complete | Baseline start | Baseline finish | Resources | Text1 |
| --- | --- | --- | --- | --- | --- | --- | --- | --- | --- | --- | --- | --- |
| 27 | 2 | **Desarrollo e Implementación ERP** |  | 65d | 2026-09-04 | 2026-12-03 |  | 87% | 2026-09-04 | 2026-12-03 |  | S/ 17,485.00 |
| 28 | 2.1 | **Análisis y Requerimientos** |  | 10d | 2026-09-04 | 2026-09-17 |  | 100% | 2026-09-04 | 2026-09-17 |  | S/ 2,484.00 |
| 29 | 2.1.1 | Levantamiento Stock y Compuestos |  | 2d | 2026-09-04 | 2026-09-07 | 9 | 100% | 2026-09-04 | 2026-09-07 | Arteaga Suarez, Herik Aymar [50%]; Mondalgo Diaz, Jose Alexander [75%] | S/ 702.00 |
| 30 | 2.1.2 | Mapeo Proceso Actual AS-IS |  | 2d | 2026-09-08 | 2026-09-09 | 29 | 100% | 2026-09-08 | 2026-09-09 | Arteaga Suarez, Herik Aymar [75%]; Mondalgo Diaz, Jose Alexander [50%] | S/ 613.00 |
| 31 | 2.1.3 | Flujo Despiece Futuro TO-BE |  | 2d | 2026-09-10 | 2026-09-11 | 30 | 100% | 2026-09-10 | 2026-09-11 | Arteaga Suarez, Herik Aymar [75%] | S/ 393.00 |
| 32 | 2.1.4 | Reglas de Negocio Receta BOM |  | 2d | 2026-09-14 | 2026-09-15 | 31 | 100% | 2026-09-14 | 2026-09-15 | Arteaga Suarez, Herik Aymar [75%] | S/ 388.00 |
| 33 | 2.1.5 | Historias de Usuario y Casos de Uso |  | 2d | 2026-09-16 | 2026-09-17 | 32 | 100% | 2026-09-16 | 2026-09-17 | Arteaga Suarez, Herik Aymar [75%] | S/ 388.00 |
| 34 | 2.2 | **Análisis y Diseño** |  | 14d | 2026-09-18 | 2026-10-07 |  | 100% | 2026-09-18 | 2026-10-07 |  | S/ 3,727.00 |
| 35 | 2.2.1 | Modelo BD: Tablas Despiece y Kardex |  | 5d | 2026-09-18 | 2026-09-24 | 33 | 100% | 2026-09-18 | 2026-09-24 | Mondalgo Diaz, Jose Alexander | S/ 1,115.00 |
| 36 | 2.2.2 | Arquitectura Transaccional ACID |  | 5d | 2026-09-25 | 2026-10-01 | 35 | 100% | 2026-09-25 | 2026-10-01 | Cueva Macedo, Junior Alberto | S/ 1,680.00 |
| 37 | 2.2.3 | Diseño de Interfaces UI/UX |  | 4d | 2026-10-02 | 2026-10-07 | 36 | 100% | 2026-10-02 | 2026-10-07 | Mondalgo Diaz, Jose Alexander [75%]; Mosquera Garcia, Anthony Eduardo [25%] | S/ 932.00 |
| 38 | 2.3 | **Construcción y Adecuación ERP** |  | 21d | 2026-10-08 | 2026-11-05 |  | 99% | 2026-10-08 | 2026-11-05 |  | S/ 5,409.00 |
| 39 | 2.3.1 | Módulo Catálogo Padre e Hijo |  | 4d | 2026-10-08 | 2026-10-13 | 37 | 100% | 2026-10-08 | 2026-10-13 | Mondalgo Diaz, Jose Alexander | S/ 895.00 |
| 40 | 2.3.2 | Motor Débito Compuesto y Crédito Simple |  | 6d | 2026-10-14 | 2026-10-21 | 39 | 100% | 2026-10-14 | 2026-10-21 | Cueva Macedo, Junior Alberto; Mondalgo Diaz, Jose Alexander [25%] | S/ 2,054.00 |
| 41 | 2.3.3 | Actualización Automática de Kardex |  | 5d | 2026-10-22 | 2026-10-28 | 40 | 100% | 2026-10-22 | 2026-10-28 | Mondalgo Diaz, Jose Alexander | S/ 1,120.00 |
| 42 | 2.3.4 | Módulo Operativo de Almacén |  | 6d | 2026-10-29 | 2026-11-05 | 41 | 95% | 2026-10-29 | 2026-11-05 | Mondalgo Diaz, Jose Alexander | S/ 1,340.00 |
| 43 | 2.4 | **Pruebas y QA** |  | 10d | 2026-11-06 | 2026-11-19 |  | 83% | 2026-11-06 | 2026-11-19 |  | S/ 2,905.00 |
| 44 | 2.4.1 | Pruebas Balance Kardex y Usabilidad |  | 5d | 2026-11-06 | 2026-11-12 | 42 | 100% | 2026-11-06 | 2026-11-12 | Mosquera Garcia, Anthony Eduardo | S/ 1,290.00 |
| 45 | 2.4.2 | Corrección de Errores / Bugs |  | 5d | 2026-11-13 | 2026-11-19 | 44 | 75% | 2026-11-13 | 2026-11-19 | Cueva Macedo, Junior Alberto [75%]; Mondalgo Diaz, Jose Alexander [50%] | S/ 1,615.00 |
| 46 | 2.5 | **Despliegue y Cierre Técnico** |  | 10d | 2026-11-20 | 2026-12-03 |  | 20% | 2026-11-20 | 2026-12-03 |  | S/ 2,960.00 |
| 47 | 2.5.1 | Migración BD y Despliegue Servidor |  | 5d | 2026-11-20 | 2026-11-26 | 45 | 30% | 2026-11-20 | 2026-11-26 | Cueva Macedo, Junior Alberto | S/ 1,500.00 |
| 48 | 2.5.2 | Manual de Usuario y Capacitación |  | 5d | 2026-11-27 | 2026-12-03 | 47 | 10% | 2026-11-27 | 2026-12-03 | Mosquera Garcia, Anthony Eduardo | S/ 1,460.00 |
| 49 | 3 | Validación final con el patrocinador |  | 5d | 2026-12-04 | 2026-12-10 | 26, 48 |  | 2026-12-04 | 2026-12-10 | Torres Espinoza, Omar Marlon [50%]; Gonzales, Jonathan [25%] | S/ 1,110.00 |
| 50 | 4 | Cierre del proyecto - Hito final | milestone | 0d | 2026-12-10 | 2026-12-10 | 49 |  | 2026-12-10 | 2026-12-10 |  | S/ 0.00 |
